# ProjectPlan

Schedule from MS Project, 2012-08-22 to 2012-12-06, A marks actual dates.

## Calendars

- Standard: Mon-Fri 08:00-12:00, 13:00-17:00; Sat-Sun off.

## Schedule

| ID | Task | Duration | Start | Finish | Predecessors | Complete | Remaining | Total slack | Free slack | Constraint |
| --- | --- | --- | --- | --- | --- | --- | --- | --- | --- | --- |
| 1 | Brainstorming | 2d | 2012-08-22 A | 2012-08-23 A |  | 100% |  |  |  |  |
| 2 | Preliminary Schematic | 6d | 2012-08-22 A | 2012-08-29 A | 1 | 100% |  |  |  |  |
| 3 | Bill of Materials | 7d | 2012-08-22 A | 2012-08-30 A | 2 | 100% |  |  |  |  |
| 4 | Order Parts | 2d | 2012-08-30 A | 2012-08-31 A | 3 | 100% |  |  |  |  |
| 5 | Breadboard Proof of Concept | 10d | 2012-08-31 A | 2012-09-13 A | 4, 2 | 100% |  |  |  |  |
| 6 | Develop Product Specification | 4d | 2012-09-10 A | 2012-09-13 A | 3 | 100% |  |  |  | finish no earlier than 2012-09-13 |
| 7 | Gant Chart | 5d | 2012-09-06 A | 2012-09-12 A |  | 100% |  |  |  |  |
| 8 | Project Proposal | 3d | 2012-09-13 | 2012-09-17 | 7 |  |  | 44d | 0d |  |
| 9 | Project Plan Presentation | 4d | 2012-09-18 | 2012-09-21 | 8 |  |  | 44d |  |  |
| 10 | Create PCB Packages | 5d | 2012-09-06 A | 2012-09-12 A | 3 | 100% |  |  |  |  |
| 11 | Place Parts on PCB | 5d | 2012-09-21 A | 2012-09-27 A | 2 | 100% |  |  |  |  |
| 12 | Route Parts on PCB | 5d | 2012-09-28 | 2012-10-04 | 11 |  |  | 0d |  |  |
| 13 | Order PCBs - Wait for Arrival | 4w | 2012-10-05 | 2012-11-01 | 10, 11, 12 |  |  | 0d |  |  |
| 14 | Develop Firmware | 12w | 2012-08-31 A | 2012-11-22 | 2 | 32% | 8.16w | 10d |  |  |
| 15 | Make Radio Interface Cables | 2d | 2012-09-03 | 2012-09-04 | 4 |  |  | 57d |  |  |
| 16 | Populate PCB | 3d | 2012-11-02 | 2012-11-06 | 13 |  |  | 2d | 0d |  |
| 17 | Test and Debug Hardware/Firmware | 10d | 2012-11-07 | 2012-11-20 | 16 |  |  | 2d |  |  |
| 18 | Order Enclosure - Wait for Arrival | 2w | 2012-11-02 | 2012-11-15 | 13 |  |  | 0d |  |  |
| 19 | Assemble Enclosure | 1w | 2012-11-16 | 2012-11-22 | 18 |  |  | 0d |  |  |
| 20 | Write Report | 2w | 2012-11-23 | 2012-12-06 | 17, 19 |  |  | 0d |  |  |
